How a schedule from an exported table changed from version to version. A marks actual dates.

## Version 1 (saved 2026-11-13)

Note of the change: feat(harisharan): add source-provenanced detailed without-basement WBS draft with isolated CPM

| Task | Finish |
| --- | --- |
| Start of provisional planning reference | 0 |
| Establish project document register | 1 |
| Archive received source versions and preserve filenames | 2 |
| Record report M25 precedence and M20 supersession | 3 |
| Confirm without-basement construction scenario | 4 |
| Review permit, municipal conditions and allowable site works | 6 |
| Check project boundaries against registered land survey | 9 |
| Reconcile architectural ground footprint and working grid | 12 |
| Review geotechnical test status and founding-level assumption | 14 |
| Confirm governing structural report design inputs and seismic conditions | 17 |
| Confirm review authority and inspection hold points | 18 |
| Review footing profile / taper edge dimensions | 20 |
| Review column confinement / six-legged hoop details and BBS | 22 |
| Reconcile beam, slab and shear-wall rebar details | 25 |
| Reconcile lift pit, tanks, underground services and load paths | 27 |
| Reconcile with-basement BOQ as archived alternate only | 28 |
| Map without-basement BOQ items to planned work packages | 30 |
| Agree subcontractor scopes and measurement rules | 32 |
| Prepare activity-specific safety and quality inspection plan | 34 |
| Prepare concrete test and materials acceptance regime | 36 |
| Confirm working calendar and realistic crew capacities | 37 |
| Review access and storage locations for constrained site logistics | 39 |
| Secure formal scope baseline review milestone | 39 |
| Site access and traffic diversion planning | 41 |
| Temporary fencing / construction signage | 43 |
| Temporary electricity, water and meters | 45 |
| Site office, labour welfare and first aid | 47 |
| Material storage, covered cement and steel racks | 49 |
| Establish safety barriers, fall prevention and PPE controls | 51 |
| Survey benchmark and control point protection | 53 |
| Existing utilities locate / protection | 55 |
| Surface clearing within approved boundary | 58 |
| Topsoil segregation and disposal route | 60 |
| Footprint setting-out and grid comparison | 62 |
| Grid/level survey QA hold | 62 |
| Temporary site drainage and erosion protection | 64 |
| Excavation spoil stacking and vehicle logistics | 65 |
| Pre-excavation foundation inspection booking | 66 |
| Set up purchase and supplier approval register | 41 |
| Request approved structural steel certificates and schedule | 41 |
| Steel quotations and procurement approval | 43 |
| Place reinforcement procurement order; staged deliveries | 45 |
| Receive / QA first reinforcement batch | 46 |
| Formwork, falsework and scaffolding order | 41 |
| Formwork/falsework arrival and condition check | 42 |
| Concrete mix designer and testing-lab appointment | 41 |
| M25 trial mix, material data and pour programme submission | 45 |
| Concrete mix acceptance and testing plan review | 45 |
| PCC materials availability check | 40 |
| Masonry units and mortar constituents sample approval | 41 |
| Waterproofing system submittal and sample review | 41 |
| Window/door schedules, manufacturing lead time review | 42 |
| Window/door shop drawing review and approval hold | 42 |
| Plumbing pipes and sanitaryware selection / ordering | 42 |
| Electrical cable, distribution boards and conduit submittals | 42 |
| Fire, life-safety and emergency systems design review | 42 |
| Lift specialist coordination, shaft/embedded interfaces review | 42 |
| Lift supplier appointment and confirmed delivery programme | 45 |
| Finishes materials mock-up and approved sample register | 42 |
| Procurement controls, lead-time and stock review | 42 |
| Grid set-out and pad footprint check | 84 |
| Controlled pad excavation, shoring and spoil transfer | 103 |
| Confirm soil founding level / bearing and soft spots | 103 |
| Stone soling / subbase preparation | 104 |
| 75 mm PCC bed placement and level inspection | 105 |
| Footing bottom and top mats / spacers / starters fixing | 107 |
| Footing and column dowel pre-pour engineer inspection | 107 |
| M25 footing pour / compaction / samples | 108 |
| Footing curing / stripping and QA acceptance | 128 |
| All footing zones completed - engineering and material clearance pending | 128 |

| Task | Finish |
| --- | --- |
| Strap-trench excavation / formation level | 152 |
| Strap beam bedding and base shuttering | 153 |
| Strap beam longitudinal steel, links, anchorage, supports | 155 |
| Strap beam rebar/cross-tie inspection hold | 155 |
| M25 strap beam pour and test samples | 156 |
| Strap beam curing and permitted removal review | 158 |
| Strap beams structural inspection/clearance | 158 |
| Column starter embedment, bend/lap and dowel BBS check | 194 |
| Substructure column longitudinal reinforcement and Ø10/100 candidate ties | 195 |
| Substructure column cage confining/cover inspection | 195 |
| Column formwork / verticality / interface checks | 196 |
| M25 substructure column pour and specimens | 197 |
| Column curing / strip release | 199 |
| All substructure columns completed and inspected | 199 |
| Plinth beam alignment and level set-out | 205 |
| Plinth beam / tie beam soffit shuttering and supports | 212 |
| Plinth beams longitudinal bars, shear links and junction steel | 214 |
| Plinth services sleeves, electrical earth provision and embedment | 215 |
| Pre-pour plinth inspection: tie details, cover, offsets, embeds | 215 |
| Plinth beam M25 concrete placement and tests | 216 |
| Plinth curing and support monitoring | 218 |
| Plinth beams inspection and level QA | 218 |
| Plinth/superstructure launch approval gate | 218 |
| Ground floor: Level/grid set-out and survey acceptance | 219 |
| Ground floor: Working platform, access/scaffold / fall protection | 221 |
| Ground floor: Column reinforcement cutting/bending and splice checks | 223 |
| Ground floor: Column tie/confinement six-leg detail inspection | 223 |
| Ground floor: Column shutter, line and verticality | 225 |
| Ground floor: Column M25 pour, vibration and samples | 226 |
| Ground floor: Column/beam junction strength/strip hold | 228 |
| Ground floor: Shear/lift wall reinforcement and boundary elements | 230 |
| Ground floor: Shear/lift wall embedded plates, boxes, sleeves | 231 |
| Ground floor: Shear/lift wall formwork and inspection | 232 |
| Ground floor: Shear/lift wall M25 pour and tests | 233 |
| Ground floor: Beam soffit formwork, props and deck platforms | 236 |
| Ground floor: Slab deck, openings, stair flights and terrace edge shuttering | 239 |
| Ground floor: Beam flexural and shear reinforcement including junction continuity | 242 |
| Ground floor: Slab top/bottom mats, extra bars and staircase steel | 245 |
| Ground floor: Electrical conduits, plumbing sleeves and floor penetrations | 247 |
| Ground floor: Beam/slab/stair formwork & steel hold-point inspection | 247 |
| Ground floor: M25 beam/slab/stair placement, slump/cubes and leveling | 249 |
| Ground floor: Curing, prop-retention and construction-load control | 256 |
| Ground floor: Structural pour and dimensional QA hold | 256 |
| Ground floor: Masonry set-out, openings and wall thickness check | 257 |
| Ground floor: Masonry material sampling, wetting and mortar preparation | 258 |
| Ground floor: External wall masonry lifts incl. lintel interface | 262 |
| Ground floor: Internal partition masonry lifts and ties | 265 |
| Ground floor: Door and window opening verification with schedules | 266 |
| Ground floor: Nonstructural wall hold / seismic separation check | 266 |
| Ground floor: Internal and external chasing coordinates agreed with MEP | 267 |
| Ground floor: MEP floor drawing coordination and ceiling-zone clash review | 269 |
| Ground floor: Drainage stack riser supports and sleeve installation | 271 |
| Ground floor: Cold water distribution and pressure-line rough in | 273 |
| Ground floor: Soil/waste/vent pipe branches and floor traps | 275 |
| Ground floor: Sanitary wall sleeve, shaft access and cleanout placement | 276 |
| Ground floor: Electrical concealed conduit and switchboard rough in | 278 |
| Ground floor: Electrical riser ducts, earthing/bonding rough in | 280 |
| Ground floor: Fire detection/alarm conduits and interfaces | 282 |
| Ground floor: Emergency/exit-lighting circuits rough in | 283 |
| Ground floor: Telecom/data/CCTV service raceway rough in (if in scope) | 285 |
| Ground floor: Ventilation / exhaust pathways and shafts (subject to design) | 287 |
| Ground floor: Lift shaft dimension, embed and access coordination (where applicable) | 288 |
| Ground floor: MEP pressure/leak tests before plaster | 288 |
| Ground floor: MEP cable continuity and conduit inspection hold | 288 |
| Ground floor: Repair chase cuts and firestop service penetrations | 289 |
| Ground floor: MEP first-fix release milestone | 289 |
| Ground floor: Wet area screed and falls inspection | 291 |
| Ground floor: Waterproofing substrate moisture / surface preparation | 293 |
| Ground floor: Wet area waterproofing membranes and upstands | 295 |
| Ground floor: Flood test and waterproofing hold | 295 |

| Task | Finish |
| --- | --- |
| Ground floor: Internal plaster/render to walls | 299 |
| Ground floor: External render and wall repair | 303 |
| Ground floor: Plaster curing and line/plumb QA | 305 |
| Ground floor: Floor levelling / screed and flatness checks | 307 |
| Ground floor: Ceiling suspension / plasterboard preparation where designed | 309 |
| Ground floor: Floor tile/stone/finish laying | 313 |
| Ground floor: Wall tiles in wet and service areas | 316 |
| Ground floor: Door frame installation and alignment | 318 |
| Ground floor: Window frame installation / flashing / sealant | 320 |
| Ground floor: Internal door leaves, hardware and locks | 322 |
| Ground floor: Electrical cable pulling, fittings, DB final connections | 324 |
| Ground floor: Plumbing fixtures, valves, sanitary fittings | 326 |
| Ground floor: Fire alarm devices, emergency lighting and first-stage checks | 328 |
| Ground floor: Surface primer, putty and finish coats | 331 |
| Ground floor: Balustrades, handrails and stair finishes | 333 |
| Ground floor: Room-level electrical, plumbing and leakage tests | 333 |
| Ground floor: Floor defects/punch list and as-built capture | 335 |
| First floor: Level/grid set-out and survey acceptance | 257 |
| First floor: Working platform, access/scaffold / fall protection | 259 |
| First floor: Column reinforcement cutting/bending and splice checks | 261 |
| First floor: Column tie/confinement six-leg detail inspection | 261 |
| First floor: Column shutter, line and verticality | 263 |
| First floor: Column M25 pour, vibration and samples | 264 |
| First floor: Column/beam junction strength/strip hold | 266 |
| First floor: Shear/lift wall reinforcement and boundary elements | 268 |
| First floor: Shear/lift wall embedded plates, boxes, sleeves | 269 |
| First floor: Shear/lift wall formwork and inspection | 270 |
| First floor: Shear/lift wall M25 pour and tests | 271 |
| First floor: Beam soffit formwork, props and deck platforms | 274 |
| First floor: Slab deck, openings, stair flights and terrace edge shuttering | 277 |
| First floor: Beam flexural and shear reinforcement including junction continuity | 280 |
| First floor: Slab top/bottom mats, extra bars and staircase steel | 283 |
| First floor: Electrical conduits, plumbing sleeves and floor penetrations | 285 |
| First floor: Beam/slab/stair formwork & steel hold-point inspection | 285 |
| First floor: M25 beam/slab/stair placement, slump/cubes and leveling | 287 |
| First floor: Curing, prop-retention and construction-load control | 294 |
| First floor: Structural pour and dimensional QA hold | 294 |
| First floor: Masonry set-out, openings and wall thickness check | 295 |
| First floor: Masonry material sampling, wetting and mortar preparation | 296 |
| First floor: External wall masonry lifts incl. lintel interface | 300 |
| First floor: Internal partition masonry lifts and ties | 303 |
| First floor: Door and window opening verification with schedules | 304 |
| First floor: Nonstructural wall hold / seismic separation check | 304 |
| First floor: Internal and external chasing coordinates agreed with MEP | 305 |
| First floor: MEP floor drawing coordination and ceiling-zone clash review | 307 |
| First floor: Drainage stack riser supports and sleeve installation | 309 |
| First floor: Cold water distribution and pressure-line rough in | 311 |
| First floor: Soil/waste/vent pipe branches and floor traps | 313 |
| First floor: Sanitary wall sleeve, shaft access and cleanout placement | 314 |
| First floor: Electrical concealed conduit and switchboard rough in | 316 |
| First floor: Electrical riser ducts, earthing/bonding rough in | 318 |
| First floor: Fire detection/alarm conduits and interfaces | 320 |
| First floor: Emergency/exit-lighting circuits rough in | 321 |
| First floor: Telecom/data/CCTV service raceway rough in (if in scope) | 323 |
| First floor: Ventilation / exhaust pathways and shafts (subject to design) | 325 |
| First floor: Lift shaft dimension, embed and access coordination (where applicable) | 326 |
| First floor: MEP pressure/leak tests before plaster | 326 |
| First floor: MEP cable continuity and conduit inspection hold | 326 |
| First floor: Repair chase cuts and firestop service penetrations | 327 |
| First floor: MEP first-fix release milestone | 327 |
| First floor: Wet area screed and falls inspection | 329 |
| First floor: Waterproofing substrate moisture / surface preparation | 331 |
| First floor: Wet area waterproofing membranes and upstands | 333 |
| First floor: Flood test and waterproofing hold | 333 |
| First floor: Internal plaster/render to walls | 337 |
| First floor: External render and wall repair | 341 |
| First floor: Plaster curing and line/plumb QA | 343 |
| First floor: Floor levelling / screed and flatness checks | 345 |
| First floor: Ceiling suspension / plasterboard preparation where designed | 347 |
| First floor: Floor tile/stone/finish laying | 351 |

| Task | Finish |
| --- | --- |
| First floor: Wall tiles in wet and service areas | 354 |
| First floor: Door frame installation and alignment | 356 |
| First floor: Window frame installation / flashing / sealant | 358 |
| First floor: Internal door leaves, hardware and locks | 360 |
| First floor: Electrical cable pulling, fittings, DB final connections | 362 |
| First floor: Plumbing fixtures, valves, sanitary fittings | 364 |
| First floor: Fire alarm devices, emergency lighting and first-stage checks | 366 |
| First floor: Surface primer, putty and finish coats | 369 |
| First floor: Balustrades, handrails and stair finishes | 371 |
| First floor: Room-level electrical, plumbing and leakage tests | 371 |
| First floor: Floor defects/punch list and as-built capture | 373 |
| Second floor: Level/grid set-out and survey acceptance | 295 |
| Second floor: Working platform, access/scaffold / fall protection | 297 |
| Second floor: Column reinforcement cutting/bending and splice checks | 299 |
| Second floor: Column tie/confinement six-leg detail inspection | 299 |
| Second floor: Column shutter, line and verticality | 301 |
| Second floor: Column M25 pour, vibration and samples | 302 |
| Second floor: Column/beam junction strength/strip hold | 304 |
| Second floor: Shear/lift wall reinforcement and boundary elements | 306 |
| Second floor: Shear/lift wall embedded plates, boxes, sleeves | 307 |
| Second floor: Shear/lift wall formwork and inspection | 308 |
| Second floor: Shear/lift wall M25 pour and tests | 309 |
| Second floor: Beam soffit formwork, props and deck platforms | 312 |
| Second floor: Slab deck, openings, stair flights and terrace edge shuttering | 315 |
| Second floor: Beam flexural and shear reinforcement including junction continuity | 318 |
| Second floor: Slab top/bottom mats, extra bars and staircase steel | 321 |
| Second floor: Electrical conduits, plumbing sleeves and floor penetrations | 323 |
| Second floor: Beam/slab/stair formwork & steel hold-point inspection | 323 |
| Second floor: M25 beam/slab/stair placement, slump/cubes and leveling | 325 |
| Second floor: Curing, prop-retention and construction-load control | 332 |
| Second floor: Structural pour and dimensional QA hold | 332 |
| Second floor: Masonry set-out, openings and wall thickness check | 333 |
| Second floor: Masonry material sampling, wetting and mortar preparation | 334 |
| Second floor: External wall masonry lifts incl. lintel interface | 338 |
| Second floor: Internal partition masonry lifts and ties | 341 |
| Second floor: Door and window opening verification with schedules | 342 |
| Second floor: Nonstructural wall hold / seismic separation check | 342 |
| Second floor: Internal and external chasing coordinates agreed with MEP | 343 |
| Second floor: MEP floor drawing coordination and ceiling-zone clash review | 345 |
| Second floor: Drainage stack riser supports and sleeve installation | 347 |
| Second floor: Cold water distribution and pressure-line rough in | 349 |
| Second floor: Soil/waste/vent pipe branches and floor traps | 351 |
| Second floor: Sanitary wall sleeve, shaft access and cleanout placement | 352 |
| Second floor: Electrical concealed conduit and switchboard rough in | 354 |
| Second floor: Electrical riser ducts, earthing/bonding rough in | 356 |
| Second floor: Fire detection/alarm conduits and interfaces | 358 |
| Second floor: Emergency/exit-lighting circuits rough in | 359 |
| Second floor: Telecom/data/CCTV service raceway rough in (if in scope) | 361 |
| Second floor: Ventilation / exhaust pathways and shafts (subject to design) | 363 |
| Second floor: Lift shaft dimension, embed and access coordination (where applicable) | 364 |
| Second floor: MEP pressure/leak tests before plaster | 364 |
| Second floor: MEP cable continuity and conduit inspection hold | 364 |
| Second floor: Repair chase cuts and firestop service penetrations | 365 |
| Second floor: MEP first-fix release milestone | 365 |
| Second floor: Wet area screed and falls inspection | 367 |
| Second floor: Waterproofing substrate moisture / surface preparation | 369 |
| Second floor: Wet area waterproofing membranes and upstands | 371 |
| Second floor: Flood test and waterproofing hold | 371 |
| Second floor: Internal plaster/render to walls | 375 |
| Second floor: External render and wall repair | 379 |
| Second floor: Plaster curing and line/plumb QA | 381 |
| Second floor: Floor levelling / screed and flatness checks | 383 |
| Second floor: Ceiling suspension / plasterboard preparation where designed | 385 |
| Second floor: Floor tile/stone/finish laying | 389 |
| Second floor: Wall tiles in wet and service areas | 392 |
| Second floor: Door frame installation and alignment | 394 |
| Second floor: Window frame installation / flashing / sealant | 396 |
| Second floor: Internal door leaves, hardware and locks | 398 |
| Second floor: Electrical cable pulling, fittings, DB final connections | 400 |
| Second floor: Plumbing fixtures, valves, sanitary fittings | 402 |

| Task | Finish |
| --- | --- |
| Second floor: Fire alarm devices, emergency lighting and first-stage checks | 404 |
| Second floor: Surface primer, putty and finish coats | 407 |
| Second floor: Balustrades, handrails and stair finishes | 409 |
| Second floor: Room-level electrical, plumbing and leakage tests | 409 |
| Second floor: Floor defects/punch list and as-built capture | 411 |
| Third floor: Level/grid set-out and survey acceptance | 333 |
| Third floor: Working platform, access/scaffold / fall protection | 335 |
| Third floor: Column reinforcement cutting/bending and splice checks | 337 |
| Third floor: Column tie/confinement six-leg detail inspection | 337 |
| Third floor: Column shutter, line and verticality | 339 |
| Third floor: Column M25 pour, vibration and samples | 340 |
| Third floor: Column/beam junction strength/strip hold | 342 |
| Third floor: Shear/lift wall reinforcement and boundary elements | 344 |
| Third floor: Shear/lift wall embedded plates, boxes, sleeves | 345 |
| Third floor: Shear/lift wall formwork and inspection | 346 |
| Third floor: Shear/lift wall M25 pour and tests | 347 |
| Third floor: Beam soffit formwork, props and deck platforms | 350 |
| Third floor: Slab deck, openings, stair flights and terrace edge shuttering | 353 |
| Third floor: Beam flexural and shear reinforcement including junction continuity | 356 |
| Third floor: Slab top/bottom mats, extra bars and staircase steel | 359 |
| Third floor: Electrical conduits, plumbing sleeves and floor penetrations | 361 |
| Third floor: Beam/slab/stair formwork & steel hold-point inspection | 361 |
| Third floor: M25 beam/slab/stair placement, slump/cubes and leveling | 363 |
| Third floor: Curing, prop-retention and construction-load control | 370 |
| Third floor: Structural pour and dimensional QA hold | 370 |
| Third floor: Masonry set-out, openings and wall thickness check | 371 |
| Third floor: Masonry material sampling, wetting and mortar preparation | 372 |
| Third floor: External wall masonry lifts incl. lintel interface | 376 |
| Third floor: Internal partition masonry lifts and ties | 379 |
| Third floor: Door and window opening verification with schedules | 380 |
| Third floor: Nonstructural wall hold / seismic separation check | 380 |
| Third floor: Internal and external chasing coordinates agreed with MEP | 381 |
| Third floor: MEP floor drawing coordination and ceiling-zone clash review | 383 |
| Third floor: Drainage stack riser supports and sleeve installation | 385 |
| Third floor: Cold water distribution and pressure-line rough in | 387 |
| Third floor: Soil/waste/vent pipe branches and floor traps | 389 |
| Third floor: Sanitary wall sleeve, shaft access and cleanout placement | 390 |
| Third floor: Electrical concealed conduit and switchboard rough in | 392 |
| Third floor: Electrical riser ducts, earthing/bonding rough in | 394 |
| Third floor: Fire detection/alarm conduits and interfaces | 396 |
| Third floor: Emergency/exit-lighting circuits rough in | 397 |
| Third floor: Telecom/data/CCTV service raceway rough in (if in scope) | 399 |
| Third floor: Ventilation / exhaust pathways and shafts (subject to design) | 401 |
| Third floor: Lift shaft dimension, embed and access coordination (where applicable) | 402 |
| Third floor: MEP pressure/leak tests before plaster | 402 |
| Third floor: MEP cable continuity and conduit inspection hold | 402 |
| Third floor: Repair chase cuts and firestop service penetrations | 403 |
| Third floor: MEP first-fix release milestone | 403 |
| Third floor: Wet area screed and falls inspection | 405 |
| Third floor: Waterproofing substrate moisture / surface preparation | 407 |
| Third floor: Wet area waterproofing membranes and upstands | 409 |
| Third floor: Flood test and waterproofing hold | 409 |
| Third floor: Internal plaster/render to walls | 413 |
| Third floor: External render and wall repair | 417 |
| Third floor: Plaster curing and line/plumb QA | 419 |
| Third floor: Floor levelling / screed and flatness checks | 421 |
| Third floor: Ceiling suspension / plasterboard preparation where designed | 423 |
| Third floor: Floor tile/stone/finish laying | 427 |
| Third floor: Wall tiles in wet and service areas | 430 |
| Third floor: Door frame installation and alignment | 432 |
| Third floor: Window frame installation / flashing / sealant | 434 |
| Third floor: Internal door leaves, hardware and locks | 436 |
| Third floor: Electrical cable pulling, fittings, DB final connections | 438 |
| Third floor: Plumbing fixtures, valves, sanitary fittings | 440 |
| Third floor: Fire alarm devices, emergency lighting and first-stage checks | 442 |
| Third floor: Surface primer, putty and finish coats | 445 |
| Third floor: Balustrades, handrails and stair finishes | 447 |
| Third floor: Room-level electrical, plumbing and leakage tests | 447 |
| Third floor: Floor defects/punch list and as-built capture | 449 |
| Fourth floor: Level/grid set-out and survey acceptance | 371 |

| Task | Finish |
| --- | --- |
| Fourth floor: Working platform, access/scaffold / fall protection | 373 |
| Fourth floor: Column reinforcement cutting/bending and splice checks | 375 |
| Fourth floor: Column tie/confinement six-leg detail inspection | 375 |
| Fourth floor: Column shutter, line and verticality | 377 |
| Fourth floor: Column M25 pour, vibration and samples | 378 |
| Fourth floor: Column/beam junction strength/strip hold | 380 |
| Fourth floor: Shear/lift wall reinforcement and boundary elements | 382 |
| Fourth floor: Shear/lift wall embedded plates, boxes, sleeves | 383 |
| Fourth floor: Shear/lift wall formwork and inspection | 384 |
| Fourth floor: Shear/lift wall M25 pour and tests | 385 |
| Fourth floor: Beam soffit formwork, props and deck platforms | 388 |
| Fourth floor: Slab deck, openings, stair flights and terrace edge shuttering | 391 |
| Fourth floor: Beam flexural and shear reinforcement including junction continuity | 394 |
| Fourth floor: Slab top/bottom mats, extra bars and staircase steel | 397 |
| Fourth floor: Electrical conduits, plumbing sleeves and floor penetrations | 399 |
| Fourth floor: Beam/slab/stair formwork & steel hold-point inspection | 399 |
| Fourth floor: M25 beam/slab/stair placement, slump/cubes and leveling | 401 |
| Fourth floor: Curing, prop-retention and construction-load control | 408 |
| Fourth floor: Structural pour and dimensional QA hold | 408 |
| Fourth floor: Masonry set-out, openings and wall thickness check | 409 |
| Fourth floor: Masonry material sampling, wetting and mortar preparation | 410 |
| Fourth floor: External wall masonry lifts incl. lintel interface | 414 |
| Fourth floor: Internal partition masonry lifts and ties | 417 |
| Fourth floor: Door and window opening verification with schedules | 418 |
| Fourth floor: Nonstructural wall hold / seismic separation check | 418 |
| Fourth floor: Internal and external chasing coordinates agreed with MEP | 419 |
| Fourth floor: MEP floor drawing coordination and ceiling-zone clash review | 421 |
| Fourth floor: Drainage stack riser supports and sleeve installation | 423 |
| Fourth floor: Cold water distribution and pressure-line rough in | 425 |
| Fourth floor: Soil/waste/vent pipe branches and floor traps | 427 |
| Fourth floor: Sanitary wall sleeve, shaft access and cleanout placement | 428 |
| Fourth floor: Electrical concealed conduit and switchboard rough in | 430 |
| Fourth floor: Electrical riser ducts, earthing/bonding rough in | 432 |
| Fourth floor: Fire detection/alarm conduits and interfaces | 434 |
| Fourth floor: Emergency/exit-lighting circuits rough in | 435 |
| Fourth floor: Telecom/data/CCTV service raceway rough in (if in scope) | 437 |
| Fourth floor: Ventilation / exhaust pathways and shafts (subject to design) | 439 |
| Fourth floor: Lift shaft dimension, embed and access coordination (where applicable) | 440 |
| Fourth floor: MEP pressure/leak tests before plaster | 440 |
| Fourth floor: MEP cable continuity and conduit inspection hold | 440 |
| Fourth floor: Repair chase cuts and firestop service penetrations | 441 |
| Fourth floor: MEP first-fix release milestone | 441 |
| Fourth floor: Wet area screed and falls inspection | 443 |
| Fourth floor: Waterproofing substrate moisture / surface preparation | 445 |
| Fourth floor: Wet area waterproofing membranes and upstands | 447 |
| Fourth floor: Flood test and waterproofing hold | 447 |
| Fourth floor: Internal plaster/render to walls | 451 |
| Fourth floor: External render and wall repair | 455 |
| Fourth floor: Plaster curing and line/plumb QA | 457 |
| Fourth floor: Floor levelling / screed and flatness checks | 459 |
| Fourth floor: Ceiling suspension / plasterboard preparation where designed | 461 |
| Fourth floor: Floor tile/stone/finish laying | 465 |
| Fourth floor: Wall tiles in wet and service areas | 468 |
| Fourth floor: Door frame installation and alignment | 470 |
| Fourth floor: Window frame installation / flashing / sealant | 472 |
| Fourth floor: Internal door leaves, hardware and locks | 474 |
| Fourth floor: Electrical cable pulling, fittings, DB final connections | 476 |
| Fourth floor: Plumbing fixtures, valves, sanitary fittings | 478 |
| Fourth floor: Fire alarm devices, emergency lighting and first-stage checks | 480 |
| Fourth floor: Surface primer, putty and finish coats | 483 |
| Fourth floor: Balustrades, handrails and stair finishes | 485 |
| Fourth floor: Kitchen/fit-out carpentry, residential level where applicable | 487 |
| Fourth floor: Room-level electrical, plumbing and leakage tests | 487 |
| Fourth floor: Floor defects/punch list and as-built capture | 489 |
| Roof plan / terraces geometry and surface fall check | 410 |
| Terrace ponding, slope design and outlets review | 412 |
| Roof parapet and opening perimeter setting-out | 413 |
| Parapet construction / anchors / guard edge safety | 416 |
| Roof screed formation and drainage gradient | 419 |
| Roof expansion joints, penetrations and cove formation | 421 |

| Task | Finish |
| --- | --- |
| Roof membrane / waterproofing layer and flashings | 424 |
| Drain outlet grilles and rainwater downpipes | 426 |
| Terrace membrane flood/ponding test hold | 426 |
| Roof thermal protection / topping screed if specified | 428 |
| Weathering/protection tile or finish installation | 431 |
| Upper/lower terrace level separation and railing | 434 |
| Machine/lift roof penetration firestopping, if designed | 436 |
| Roof rainwater and overflow trial | 436 |
| Roof final watertightness inspection | 436 |
| Site-wide underground drainage alignments and trench permit | 220 |
| Site drainage, manholes, septic/soak-pit layout source review | 222 |
| Underground sewer/storm pipe bedding and placement | 226 |
| Underground service trenches, backfill and compaction tests | 229 |
| Septic tank / soak pit permit, design and verification hold | 229 |
| Septic / soak / water tank structural work where approved | 234 |
| External rainwater connections to storm system | 236 |
| Water supply connection, meters and tests | 238 |
| Utility power connection request and supplier inspection | 241 |
| Electrical earth pit and earthing resistance test | 243 |
| External walls/weather seals and service penetrations | 246 |
| Exterior facade substrate repairs / primer | 248 |
| Exterior painting or cladding as specified | 252 |
| Ground-level external paving base and compaction | 255 |
| Paving/floor finish and surface drainage falls | 258 |
| Parking/entrance ramps and access gradients | 261 |
| Entrance landing, staircase and handrails | 264 |
| Boundary / gate coordination and installation | 267 |
| Site lighting and exterior fixtures | 269 |
| Accessible entrance, signage and external fire route | 271 |
| Site waste clearance and landscaping / reinstatement | 274 |
| External service pressure/leak and drainage flow test | 274 |
| External area snag / property boundary QA | 276 |
| All 5 floor fit-outs, terraces and site externals ready for integrated testing | 489 |
| Electrical distribution board checks and circuit schedules | 491 |
| Earth continuity, insulation resistance and polarity verification | 493 |
| Emergency and egress lighting operational demonstration | 494 |
| Fire alarm and detectors cause-effect commissioning | 496 |
| Fire extinguisher/standpipe checks where designed | 497 |
| Water supply flushing and disinfection | 499 |
| Internal water pressure tests and leakage rectification | 501 |
| Sewer, vent stack and storm-water flow tests | 503 |
| Lift equipment acceptance, statutory inspection and commissioning | 507 |
| Ventilation / exhaust fan operation and air-flow tests | 509 |
| Wet-area / terrace final water-tightness inspection | 511 |
| Surface finishes, glazing, lock and ironmongery inspections | 513 |
| Structural nonconformance and change-order closure | 515 |
| Materials certificates and concrete cube-results consolidation | 517 |
| As-built architecture and structural setting-out markups | 519 |
| As-built MEP single-line, riser and plumbing markups | 521 |
| Equipment warranties, manuals and spares handover | 523 |
| Life safety and operations training | 525 |
| Defect snag schedule and room-by-room closeout | 528 |
| Independent engineer / municipal inspections when applicable | 528 |
| Owner walkthrough and defect list signoff | 528 |
| Final cleaning, removal of temporary works | 530 |
| Handover document and photograph record final QA | 532 |
| Practical completion milestone - unapproved until signed | 532 |
| Provisional schedule network end / NOT construction approval | 532 |

## Version 2 (saved 2026-11-13)

Note of the change: fix(harisharan): adopt 8mm transverse links and correct unverified 10mm attribution

Added:

| Task | Finish |
| --- | --- |
| Substructure column longitudinal reinforcement and Ø8 mm transverse links (detailing hold) | 195 |

Removed: Substructure column longitudinal reinforcement and Ø10/100 candidate ties
